# 32УП

Schedule from ProjectLibre, 2025-03-10 to 2025-07-10.

## Calendars

- П'ятиденка: Mon-Fri 08:00-12:00, 13:00-17:00; Sat-Sun off.

## Resources

| Resource | Rate | Cost per use |
| --- | --- | --- |
| Unassigned |  |  |
| Менеджер проєкту | 35 |  |
| Аналітик | 30 |  |
| Дизайнер | 30 |  |
| Middle front-end developer | 35 |  |
| Senior back-end developer | 40 |  |
| Middle back-end developer | 35 |  |
| Junior back-end developer | 28 |  |
| QA engineer | 29 |  |
| DevOps | 37 |  |
| Кава | 20 | 20 |
| Чай | 15 | 15 |

## Schedule

| ID | WBS | Task | Duration | Start | Finish | Predecessors | Constraint | Deadline | Resources |
| --- | --- | --- | --- | --- | --- | --- | --- | --- | --- |
| 1 | 1 | **Проєкт** | 88d | 2025-03-10 | 2025-07-10 |  |  |  |  |
| 2 | 1.1 | Закриття проєкту | 0d | 2025-07-10 | 2025-07-10 | 4 | finish no later than 2025-08-04 | 2025-08-02 |  |
| 3 | 1.2 | **Запуск і супровід** | 6d | 2025-07-02 | 2025-07-10 |  | finish no later than 2025-08-01 | 2025-08-01 |  |
| 4 | 1.2.1 | Валідація та приймання системи замовником | 1d | 2025-07-09 | 2025-07-10 | 5 |  | 2025-07-20 | Менеджер проєкту |
| 5 | 1.2.2 | Перевірка якості та усунення помилок | 3d | 2025-07-04 | 2025-07-09 | 7 |  |  | QA engineer; Junior back-end developer [80%]; Senior back-end developer [70%] |
| 6 | 1.2.3 | Підготовка платформи | 1d | 2025-07-02 | 2025-07-03 | 8SS |  |  | DevOps |
| 7 | 1.2.4 | Розгортання системи та наповнення контентом | 1d | 2025-07-03 | 2025-07-04 | 6 |  |  | Senior back-end developer [80%]; DevOps |
| 8 | 1.2.5 | Створення пакета передачі | 2d | 2025-07-02 | 2025-07-04 | 13 |  |  | Менеджер проєкту [70%]; Senior back-end developer |
| 9 | 1.3 | **Розробка** | 60d | 2025-04-09 | 2025-07-02 |  | finish no later than 2025-07-28 | 2025-07-27 |  |
| 10 | 1.3.1 | Інтеграція | 1d | 2025-06-26 | 2025-06-27 | 12SS+3d |  |  |  |
| 11 | 1.3.2 | Тестування | 14d | 2025-06-03 | 2025-06-23 | 16FF, 14FS-10d |  |  | QA engineer [30%]; Аналітик [50%]; Middle front-end developer [30%]; DevOps [50%] |
| 12 | 1.3.3 | Доробка коду, виправлення помилок | 7d | 2025-06-23 | 2025-07-02 | 11 |  |  | Junior back-end developer; QA engineer [70%]; Senior back-end developer [30%]; Middle front-end developer [50%] |
| 13 | 1.3.4 | Завершення розробки | 0d | 2025-07-02 | 2025-07-02 | 12 |  |  |  |
| 14 | 1.3.5 | Back-end розробка | 46d | 2025-04-14 | 2025-06-17 | 15 |  |  | Senior back-end developer; Junior back-end developer; Middle back-end developer [70%] |
| 15 | 1.3.6 | Розробка бази даних | 3d | 2025-04-09 | 2025-04-14 | 16SS |  |  | Middle front-end developer |
| 16 | 1.3.7 | Front-end розробка | 32d | 2025-04-09 | 2025-05-23 | 18 | start no earlier than 2025-04-07 |  | Middle front-end developer |
| 17 | 1.4 | **Проєктування** | 7d | 2025-03-31 | 2025-04-09 |  | finish no later than 2025-05-26 | 2025-05-25 |  |
| 18 | 1.4.1 | Завершення проєктування | 0d | 2025-04-09 | 2025-04-09 | 19, 20, 21 |  |  |  |
| 19 | 1.4.2 | Розробка дизайну сторінок за затвердженим концептом | 7d | 2025-03-31 | 2025-04-09 | 28 |  |  | Дизайнер [80%]; Middle front-end developer [50%]; QA engineer [10%] |
| 20 | 1.4.3 | Проєктування архітектури системи | 3d | 2025-03-31 | 2025-04-03 | 19SS |  |  | Senior back-end developer; Аналітик [70%] |
| 21 | 1.4.4 | Проєктування БД | 3d | 2025-03-31 | 2025-04-03 | 20SS |  |  | Middle back-end developer; Аналітик [50%] |
| 22 | 1.5 | **Аналіз вимог** | 15d | 2025-03-10 | 2025-03-31 |  | start no earlier than 2025-03-03 |  |  |
| 23 | 1.5.1 | Аналіз предметної області та опитування замовника | 5d | 2025-03-10 | 2025-03-17 |  | start no earlier than 2025-03-10 |  | QA engineer [30%]; Менеджер проєкту; Аналітик [70%] |
| 24 | 1.5.2 | Розробка й затвердження концепту дизайну | 2d | 2025-03-17 | 2025-03-19 | 23 |  |  | Аналітик [30%]; Дизайнер |
| 25 | 1.5.3 | Специфікація вимог | 6d | 2025-03-19 | 2025-03-27 | 24 |  |  | Менеджер проєкту [25%]; Аналітик [80%]; QA engineer [50%] |
| 26 | 1.5.4 | Планування проєкту | 3d | 2025-03-19 | 2025-03-24 | 25SS |  |  | Менеджер проєкту |
| 27 | 1.5.5 | Затвердження специфікації вимог і плану управління проєктом | 2d | 2025-03-27 | 2025-03-31 | 25, 26 |  |  | Менеджер проєкту; Аналітик [30%] |
| 28 | 1.5.6 | Завершення аналізу вимог | 0d | 2025-03-31 | 2025-03-31 | 27 |  |  |  |
